# 立项

How a schedule from a web Gantt chart changed from version to version. A marks actual dates.

## Version 1 (saved 2024-05-11)

| ID | Task | Duration | Start | Finish | Predecessors |
| --- | --- | --- | --- | --- | --- |
| 2 | 党委会汇报审议 | 1d | 2024-05-17 | 2024-05-17 |  |
| 3 | 发改投资项目赋码备案 | 1d | 2024-05-20 | 2024-05-20 | 2 |
| 4 | 管线规划路由咨询委托（直接委托） | 1d | 2024-05-20 | 2024-05-20 | 2 |
| 5 | 可研委托（中介超市） | 5d | 2024-05-20 | 2024-05-24 | 2 |
| 6 | 可研编制 | 14d | 2024-05-27 | 2024-06-13 | 5 |
| 7 | 补水可行性专项咨询委托（中介超市） | 5d | 2024-05-21 | 2024-05-27 | 3 |
| 8 | 补水可行性专项咨询编制 | 7d | 2024-05-28 | 2024-06-05 | 7 |

## Version 2 (saved 2024-05-11)

Last finish 2024-06-13 → 2025-01-17 (+218d).

Added:

| ID | Task | Duration | Start | Finish | Predecessors |
| --- | --- | --- | --- | --- | --- |
| 5 | 管线规划路由方案编制评审 | 14d | 2024-05-22 | 2024-06-04 | 4 |
| 7 | 补水可行性专项咨询编制评审 | 7d | 2024-05-28 | 2024-06-03 | 6 |
| 9 | 可研编制评审 | 14d | 2024-05-26 | 2024-06-08 | 8 |
| 10 | 可研报批 | 5d | 2024-06-09 | 2024-06-13 | 9, 7 |
| 11 | 招标代理及造价服务委托（中介超市） | 5d | 2024-05-21 | 2024-05-25 | 3 |
| 12 | 设计招标文件编制 | 5d | 2024-06-09 | 2024-06-13 | 11, 9 |
| 13 | 设计招标 | 25d | 2024-06-14 | 2024-07-08 | 12 |
| 14 | 初步设计编制评审 | 20d | 2024-07-09 | 2024-07-28 | 13 |
| 15 | 概算审核 | 15d | 2024-07-29 | 2024-08-12 | 14 |
| 16 | 环评登记备案 | 5d | 2024-07-29 | 2024-08-02 | 14 |
| 17 | 初设报批 | 5d | 2024-08-13 | 2024-08-17 | 15, 16 |
| 18 | 施工图编制(同步开展） | 15d | 2024-07-29 | 2024-08-12 | 14 |
| 19 | 施工图审核 | 10d | 2024-08-18 | 2024-08-27 | 17, 18 |
| 20 | 农业局水利工程相关方案手续办理 | 20d | 2024-08-13 | 2024-09-01 | 18 |
| 21 | 标书及招标控制价编制 | 10d | 2024-08-13 | 2024-08-22 | 18 |
| 22 | 施工招标 | 25d | 2024-08-23 | 2024-09-16 | 21 |
| 23 | 施工许可 | 3d | 2024-09-17 | 2024-09-19 | 20, 22 |
| 24 | 施工阶段 | 120d | 2024-09-20 | 2025-01-17 | 23 |

Removed: 6 可研编制; 8 补水可行性专项咨询编制

Changed:

| ID | Task | Start | Finish | Predecessors |
| --- | --- | --- | --- | --- |
| 4 | 管线规划路由咨询委托（直接委托） | 2024-05-20 → 2024-05-21 (+1d) | 2024-05-20 → 2024-05-21 (+1d) | 2 → 3 |
| 6 | 补水可行性专项咨询委托（中介超市） |  | 2024-05-27 → 2024-05-25 (-2d) |  |
| 8 | 可研委托（中介超市） | 2024-05-20 → 2024-05-21 (+1d) | 2024-05-24 → 2024-05-25 (+1d) | 2 → 3 |

## Version 3 (saved 2024-05-13)

Last finish stays 2025-01-17.

Added:

| ID | Task | Duration | Start | Finish | Predecessors |
| --- | --- | --- | --- | --- | --- |
| 24 | 施工阶段（计划春节前完工） | 120d | 2024-09-20 | 2025-01-17 | 23 |

Removed: 24 施工阶段
